How a schedule from MS Project changed from version to version. A marks actual dates.

## Version 1 (saved 2023-10-19, file Proyecto Planificacion Grupo 6.mpp)

| ID | WBS | Task | Duration | Start | Finish | Predecessors | Total float |
| --- | --- | --- | --- | --- | --- | --- | --- |
| 1 | 1 | **Sistema de gestion de turnos y pacientes para la SAP** | 61d | 2023-09-14 | 2023-12-07 |  | 0d |
| 2 | 1.1 | **Investigación preliminar** | 21d | 2023-09-14 | 2023-10-12 |  | 0d |
| 3 |  | Verificar el estado de las instalaciones electricas. | 2d | 2023-09-14 | 2023-09-15 |  | 42d |
| 4 |  | Investigar recursos para el reacondicionamiento electrico del sitio. | 3d | 2023-09-18 | 2023-09-20 | 3 | 42d |
| 5 |  | Realizar presupuesto de recursos para el reacondicionamiento eléctrico del sitio (cableado y limpieza). | 4d | 2023-09-21 | 2023-09-26 | 4 | 42d |
| 6 |  | Reacondicionar el lugar. | 10d | 2023-09-27 | 2023-10-10 | 5 | 42d |
| 7 |  | Realizar entrevista al jefe | 1d | 2023-09-14 | 2023-09-14 |  | 0d |
| 8 |  | Elaborar Especificación de Requisitos de Usuario (ERS) | 3d | 2023-09-15 | 2023-09-19 | 7 | 0d |
| 9 |  | Verificar el estado de los equipos actuales (computadoras). | 2d | 2023-09-20 | 2023-09-21 | 8 | 35d |
| 10 |  | Realizar pedido de computadoras nuevas a la Subsecretaría de Salud. | 14d | 2023-09-22 | 2023-10-11 | 9 | 35d |
| 11 |  | Recibir pedido de computadoras. | 1d | 2023-10-12 | 2023-10-12 | 10 | 35d |
| 12 |  | Investigación preliminar realizada. | 0d | 2023-10-12 | 2023-10-12 | 11 | 35d |
| 13 | 1.2 | **Desarrollo** | 57d | 2023-09-20 | 2023-12-07 |  | 0d |
| 14 | 1.2.1 | **Base de datos** | 24d | 2023-09-20 | 2023-10-23 |  | 0d |
| 15 |  | Realizar el modelo entidad relación de la base de datos para turnos y pacientes. | 5d | 2023-09-20 | 2023-09-26 | 8 | 0d |
| 16 |  | Realizar modelo relacional de la BD. | 3d | 2023-09-27 | 2023-09-29 | 15 | 0d |
| 17 |  | Desarrollar la base de datos. | 14d | 2023-10-02 | 2023-10-19 | 16 | 0d |
| 18 |  | Desplegar la base de datos. | 2d | 2023-10-20 | 2023-10-23 | 17 | 0d |
| 19 |  | Base de datos desplegada. | 0d | 2023-10-23 | 2023-10-23 | 18 | 33d |
| 20 | 1.2.2 | **Interfaz de usuario** | 13d | 2023-09-20 | 2023-10-06 |  | 11d |
| 21 |  | Diseñar boceto de interfaz del programa que será usado por el personal de recepción. | 4d | 2023-09-20 | 2023-09-25 | 8 | 11d |
| 22 |  | Presentar boceto al personal de recepción. | 1d | 2023-09-26 | 2023-09-26 | 21 | 11d |
| 23 |  | Desarrollar interfaz. | 8d | 2023-09-27 | 2023-10-06 | 22 | 11d |
| 24 |  | Interfaz de usuario realizada. | 0d | 2023-10-06 | 2023-10-06 | 23 | 11d |
| 25 | 1.2.3 | **Aplicación** | 16d | 2023-10-24 | 2023-11-14 |  | 0d |
| 26 |  | Realizar diagrama de clases. | 2d | 2023-10-24 | 2023-10-25 | 18, 24 | 0d |
| 27 |  | Desarrollar el módulo de turnos de la aplicación. | 14d | 2023-10-26 | 2023-11-14 | 26 | 0d |
| 28 |  | Desarrollar el módulo de pacientes de la aplicación. | 14d | 2023-10-26 | 2023-11-14 | 26 | 0d |
| 29 |  | Aplicación desarrollada. | 0d | 2023-11-14 | 2023-11-14 | 28, 27 | 0d |
| 30 | 1.2.4 | **Integración** | 12d | 2023-11-15 | 2023-11-30 |  | 0d |
| 31 |  | Integrar capas del sistema. | 5d | 2023-11-15 | 2023-11-21 | 29 | 0d |
| 32 |  | Realizar pruebas al sistema. | 7d | 2023-11-22 | 2023-11-30 | 31 | 0d |
| 33 |  | Realizar manual de usuario de la aplicación. | 5d | 2023-11-22 | 2023-11-28 | 31 | 2d |
| 34 |  | Integración finalizada. | 0d | 2023-11-30 | 2023-11-30 | 33, 32 | 0d |
| 35 | 1.2.5 | **Despliegue** | 5d | 2023-12-01 | 2023-12-07 |  | 0d |
| 36 |  | Instalar las nuevas computadoras en el área de recepción. | 1d | 2023-12-01 | 2023-12-01 | 12, 34 | 0d |
| 37 |  | Instalar el sistema en las computadoras nuevas. | 1d | 2023-12-04 | 2023-12-04 | 36 | 0d |
| 38 |  | Capacitar al personal de recepción. | 3d | 2023-12-05 | 2023-12-07 | 37 | 0d |
| 39 |  | Sistema desplegado. | 0d | 2023-12-07 | 2023-12-07 | 38 | 0d |
| 40 |  | Desarrollo finalizado. | 0d | 2023-12-07 | 2023-12-07 | 39 | 0d |
| 41 |  | Sistema de gestión implementado. | 0d | 2023-12-07 | 2023-12-07 | 40 | 0d |

## Version 2 (saved 2023-10-19, file Proyecto Planificacion Grupo 6.mpp)

Note of the change: Update Proyecto Planificacion Grupo 6.mpp

Last finish stays 2023-12-07.

Added:

| ID | Task | Duration | Start | Finish | Predecessors |
| --- | --- | --- | --- | --- | --- |
| 6 | Realizar entrevista a las recepcionistas | 0.25d | 2023-09-14 | 2023-09-14 |  |
| 14 | Recopilar informacion de las planillas de Excel | 1d | 2023-09-19 | 2023-09-20 | 7 |
| 18 | Importar datos a la BD | 0.5d | 2023-10-06 | 2023-10-06 | 14, 17 |

Changed:

| ID | Task | Start | Finish | Duration | Total float | Predecessors |
| --- | --- | --- | --- | --- | --- | --- |
| 1 | **Sistema de gestion de turnos y pacientes para la SAP** |  |  | 61d → 60.75d |  |  |
| 2 | **Investigación preliminar** |  | 2023-10-12 → 2023-10-11 (-1d) | 21d → 19.75d |  |  |
| 5 | Realizar entrevista al jefe |  |  | 1d → 0.25d |  |  |
| 7 | Elaborar Especificación de Requisitos de Usuario (ERS) | 2023-09-15 → 2023-09-14 (-1d) |  |  |  | 5 → 5, 6 |
| 8 | Verificar el estado de los equipos actuales (computadoras). | 2023-09-20 → 2023-09-19 (-1d) |  |  | 35d → 38d |  |
| 9 | Realizar pedido de computadoras nuevas a la Subsecretaría de Salud. | 2023-09-22 → 2023-09-21 (-1d) | 2023-10-11 → 2023-09-21 (-20d) | 14d → 0.5d | 35d → 38d |  |
| 10 | Recibir pedido de computadoras. | 2023-10-12 → 2023-09-21 (-21d) | 2023-10-12 → 2023-10-11 (-1d) | 1d → 14d | 35d → 38d |  |
| 11 | Investigación preliminar realizada. | 2023-10-12 → 2023-10-11 (-1d) | 2023-10-12 → 2023-10-11 (-1d) |  | 35d → 38d |  |
| 12 | **Desarrollo** | 2023-09-20 → 2023-09-19 (-1d) |  | 57d → 57.5d |  |  |
| 13 | **Base de datos** | 2023-09-20 → 2023-09-19 (-1d) | 2023-10-23 → 2023-10-06 (-17d) | 24d → 13.5d |  |  |
| 15 | Realizar el modelo entidad relación de la base de datos para turnos y pacientes. | 2023-09-20 → 2023-09-19 (-1d) |  |  |  |  |
| 16 | Realizar modelo relacional de la BD. | 2023-09-27 → 2023-09-26 (-1d) |  |  |  |  |
| 17 | Desarrollar la base de datos. | 2023-10-02 → 2023-09-29 (-3d) | 2023-10-19 → 2023-10-06 (-13d) | 14d → 5d |  |  |
| 19 | Desplegar la base de datos. | 2023-10-20 → 2023-10-06 (-14d) | 2023-10-23 → 2023-10-06 (-17d) | 2d → 0.5d |  |  |
| 20 | Base de datos desplegada. | 2023-10-23 → 2023-10-06 (-17d) | 2023-10-23 → 2023-10-06 (-17d) |  | 33d → 44d |  |
| 21 | **Interfaz de usuario** | 2023-09-20 → 2023-09-19 (-1d) | 2023-10-06 → 2023-10-05 (-1d) | 13d → 12.25d | 11d → 1.25d |  |
| 22 | Diseñar boceto de interfaz del programa que será usado por el personal de recepción. | 2023-09-20 → 2023-09-19 (-1d) |  |  | 11d → 1.25d |  |
| 23 | Presentar boceto al personal de recepción. | 2023-09-26 → 2023-09-25 (-1d) | 2023-09-26 → 2023-09-25 (-1d) | 1d → 0.25d | 11d → 1.25d |  |
| 24 | Desarrollar interfaz. | 2023-09-27 → 2023-09-25 (-2d) | 2023-10-06 → 2023-10-05 (-1d) |  | 11d → 1.25d |  |
| 25 | Interfaz de usuario realizada. | 2023-10-06 → 2023-10-05 (-1d) | 2023-10-06 → 2023-10-05 (-1d) |  | 11d → 1.25d |  |
| 26 | **Aplicación** | 2023-10-24 → 2023-10-06 (-18d) | 2023-11-14 → 2023-10-27 (-18d) | 16d → 15d |  |  |
| 27 | Realizar diagrama de clases. | 2023-10-24 → 2023-10-06 (-18d) | 2023-10-25 → 2023-10-09 (-16d) | 2d → 1d |  |  |
| 28 | Desarrollar el módulo de turnos de la aplicación. | 2023-10-26 → 2023-10-09 (-17d) | 2023-11-14 → 2023-10-27 (-18d) |  |  |  |
| 29 | Desarrollar el módulo de pacientes de la aplicación. | 2023-10-26 → 2023-10-09 (-17d) | 2023-11-14 → 2023-10-27 (-18d) |  |  |  |
| 30 | Aplicación desarrollada. | 2023-11-14 → 2023-10-27 (-18d) | 2023-11-14 → 2023-10-27 (-18d) |  |  |  |
| 31 | **Integración** | 2023-11-15 → 2023-10-27 (-19d) | 2023-11-30 → 2023-11-14 (-16d) |  |  |  |
| 32 | Integrar capas del sistema. | 2023-11-15 → 2023-10-27 (-19d) | 2023-11-21 → 2023-11-03 (-18d) |  |  |  |
| 33 | Realizar pruebas al sistema. | 2023-11-22 → 2023-11-03 (-19d) | 2023-11-30 → 2023-11-14 (-16d) |  |  |  |
| 34 | Realizar manual de usuario de la aplicación. | 2023-11-22 → 2023-11-03 (-19d) | 2023-11-28 → 2023-11-10 (-18d) |  |  |  |
| 35 | Integración finalizada. | 2023-11-30 → 2023-11-14 (-16d) | 2023-11-30 → 2023-11-14 (-16d) |  |  |  |
| 36 | **Despliegue** | 2023-12-01 → 2023-11-14 (-17d) |  | 5d → 17d |  |  |
| 37 | Realizar presupuesto de recursos para el reacondicionamiento eléctrico del sitio (cableado y limpieza). | 2023-09-21 → 2023-11-14 (+54d) | 2023-09-26 → 2023-11-20 (+55d) |  | 42d → 0d | 4 → 35, 4 |
| 38 | Reacondicionar el lugar. | 2023-09-27 → 2023-11-20 (+54d) | 2023-10-10 → 2023-12-04 (+55d) |  | 42d → 0d |  |
| 39 | Instalar las nuevas computadoras en el área de recepción. | 2023-12-01 → 2023-12-04 (+3d) | 2023-12-01 → 2023-12-05 (+4d) | 1d → 0.75d |  | 11, 35 → 38, 11 |
| 40 | Instalar el sistema en las computadoras nuevas. | 2023-12-04 → 2023-12-05 (+1d) | 2023-12-04 → 2023-12-05 (+1d) | 1d → 0.25d |  |  |
| 41 | Capacitar al personal de recepción. |  |  | 3d → 2d |  |  |

## Version 3 (saved 2023-10-26, file Proyecto Planificacion Grupo 6.mpp)

Last finish 2023-12-07 → 2023-11-22 (-15d).

Added:

| ID | Task | Duration | Start | Finish | Predecessors | Resources |
| --- | --- | --- | --- | --- | --- | --- |
| 39 | Realizar limpieza del lugar | 1d | 2023-11-16 | 2023-11-17 | 38 | Materiales de limpieza; Servicio de limpieza |

Changed:

| ID | Task | Start | Finish | Duration | Total float | Predecessors | Other |
| --- | --- | --- | --- | --- | --- | --- | --- |
| 1 | **Sistema de gestion de turnos y pacientes para la SAP** |  | 2023-12-07 → 2023-11-22 (-15d) | 60.75d → 48.75d |  |  | resources none → Ingeniero de Sistemas |
| 2 | **Investigación preliminar** |  | 2023-10-11 → 2023-10-10 (-1d) | 19.75d → 19d | 0d → 1.75d |  | resources none → Electricista |
| 3 | Verificar el estado de las instalaciones electricas. |  | 2023-09-15 → 2023-09-14 (-1d) | 2d → 0.5d | 42d → 36.75d |  |  |
| 4 | Investigar recursos para el reacondicionamiento electrico del sitio. | 2023-09-18 → 2023-09-14 (-4d) | 2023-09-20 → 2023-09-18 (-2d) | 3d → 2d | 42d → 36.75d |  |  |
| 5 | Realizar entrevista al jefe |  |  |  | 0d → 1.75d |  | resources none → Analista en sistemas |
| 6 | Realizar entrevista a las recepcionistas |  |  |  | 0d → 1.75d |  | resources none → Analista en sistemas |
| 7 | Elaborar Especificación de Requisitos de Usuario (ERS) | 2023-09-14 → 2023-09-15 (+1d) |  |  | 0d → 1d |  | constraint none → start no earlier than 2023-09-15; resources none → Analista en sistemas |
| 8 | Verificar el estado de los equipos actuales (computadoras). | 2023-09-19 → 2023-09-20 (+1d) | 2023-09-21 → 2023-09-20 (-1d) | 2d → 0.5d | 38d → 26.75d |  | resources none → Tecnico informatico |
| 9 | Realizar pedido de computadoras nuevas a la Subsecretaría de Salud. | 2023-09-21 → 2023-09-20 (-1d) | 2023-09-21 → 2023-09-20 (-1d) |  | 38d → 26.75d |  |  |
| 10 | Recibir pedido de computadoras. |  | 2023-10-11 → 2023-10-10 (-1d) |  | 38d → 26.75d |  | resources none → Computadoras |
| 11 | Investigación preliminar realizada. | 2023-10-11 → 2023-10-10 (-1d) | 2023-10-11 → 2023-10-10 (-1d) |  | 38d → 26.75d |  |  |
| 12 | **Desarrollo** | 2023-09-19 → 2023-09-20 (+1d) | 2023-12-07 → 2023-11-22 (-15d) | 57.5d → 44.75d |  |  |  |
| 13 | **Base de datos** | 2023-09-19 → 2023-09-20 (+1d) | 2023-10-06 → 2023-10-09 (+3d) | 13.5d → 13.25d | 0d → 1d |  |  |
| 14 | Recopilar informacion de las planillas de Excel | 2023-09-19 → 2023-09-20 (+1d) |  |  | 56d → 41d |  | resources none → Programador Junior |
| 15 | Realizar el modelo entidad relación de la base de datos para turnos y pacientes. | 2023-09-19 → 2023-09-21 (+2d) | 2023-09-26 → 2023-09-22 (-4d) | 5d → 2d |  |  | constraint none → start no earlier than 2023-09-21; resources none → Administrador de BD |
| 16 | Realizar modelo relacional de la BD. | 2023-09-26 → 2023-09-25 (-1d) | 2023-09-29 → 2023-09-25 (-4d) | 3d → 1d |  |  | resources none → Administrador de BD |
| 17 | Desarrollar la base de datos. | 2023-09-29 → 2023-09-26 (-3d) | 2023-10-06 → 2023-10-02 (-4d) |  |  |  | resources none → Administrador de BD |
| 18 | Importar datos a la BD |  |  |  | 44d → 32d |  | resources none → Programador Junior |
| 19 | Desplegar la base de datos. |  | 2023-10-06 → 2023-10-09 (+3d) |  |  |  | resources none → Programador Junior |
| 20 | Base de datos desplegada. | 2023-10-06 → 2023-10-09 (+3d) | 2023-10-06 → 2023-10-09 (+3d) |  | 44d → 31.5d |  |  |
| 21 | **Interfaz de usuario** | 2023-09-19 → 2023-09-20 (+1d) | 2023-10-05 → 2023-10-04 (-1d) | 12.25d → 10.25d | 1.25d → 3d |  |  |
| 22 | Diseñar boceto de interfaz del programa que será usado por el personal de recepción. | 2023-09-19 → 2023-09-20 (+1d) | 2023-09-25 → 2023-09-22 (-3d) | 4d → 3d | 1.25d → 3d |  | resources none → Diseñador de Interfaces |
| 23 | Presentar boceto al personal de recepción. |  |  |  | 1.25d → 3d |  | resources none → Diseñador de Interfaces |
| 24 | Desarrollar interfaz. |  | 2023-10-05 → 2023-10-04 (-1d) | 8d → 7d | 1.25d → 3d |  | resources none → Programador Junior |
| 25 | Interfaz de usuario realizada. | 2023-10-05 → 2023-10-04 (-1d) | 2023-10-05 → 2023-10-04 (-1d) |  | 1.25d → 3d |  |  |
| 26 | **Aplicación** | 2023-10-06 → 2023-10-09 (+3d) | 2023-10-27 → 2023-10-31 (+4d) |  |  |  |  |
| 27 | Realizar diagrama de clases. | 2023-10-06 → 2023-10-09 (+3d) | 2023-10-09 → 2023-10-10 (+1d) |  |  |  | resources none → Programador Senior |
| 28 | Desarrollar el módulo de turnos de la aplicación. | 2023-10-09 → 2023-10-10 (+1d) | 2023-10-27 → 2023-10-31 (+4d) |  |  |  | resources none → Programador Senior [50%] |
| 29 | Desarrollar el módulo de pacientes de la aplicación. | 2023-10-09 → 2023-10-10 (+1d) | 2023-10-27 → 2023-10-31 (+4d) |  |  |  | resources none → Programador Senior [50%] |
| 30 | Aplicación desarrollada. | 2023-10-27 → 2023-10-31 (+4d) | 2023-10-27 → 2023-10-31 (+4d) |  |  |  |  |
| 31 | **Integración** | 2023-10-27 → 2023-10-31 (+4d) | 2023-11-14 → 2023-11-09 (-5d) | 12d → 7d |  |  |  |
| 32 | Integrar capas del sistema. | 2023-10-27 → 2023-10-31 (+4d) | 2023-11-03 → 2023-11-02 (-1d) | 5d → 2d |  |  | resources none → Programador Senior |
| 33 | Realizar pruebas al sistema. | 2023-11-03 → 2023-11-02 (-1d) | 2023-11-14 → 2023-11-09 (-5d) | 7d → 5d |  |  | resources none → Ingeniero de pruebas |
| 34 | Realizar manual de usuario de la aplicación. | 2023-11-03 → 2023-11-02 (-1d) | 2023-11-10 → 2023-11-07 (-3d) | 5d → 3d |  |  | resources none → Programador Junior |
| 35 | Integración finalizada. | 2023-11-14 → 2023-11-09 (-5d) | 2023-11-14 → 2023-11-09 (-5d) |  |  |  |  |
| 36 | **Despliegue** | 2023-11-14 → 2023-11-09 (-5d) | 2023-12-07 → 2023-11-22 (-15d) | 17d → 9.5d |  |  | resources none → Electricista |
| 37 | Realizar presupuesto de recursos para el reacondicionamiento eléctrico del sitio (cableado y limpieza). | 2023-11-14 → 2023-11-09 (-5d) | 2023-11-20 → 2023-11-09 (-11d) | 4d → 0.5d |  |  |  |
| 38 | Reacondicionar el lugar. | 2023-11-20 → 2023-11-09 (-11d) | 2023-12-04 → 2023-11-16 (-18d) | 10d → 5d |  |  | resources none → Materiales electricos |
| 40 | Instalar las nuevas computadoras en el área de recepción. | 2023-12-04 → 2023-11-17 (-17d) | 2023-12-05 → 2023-11-20 (-15d) |  |  | 38, 11 → 11, 39 | resources none → Tecnico informatico |
| 41 | Instalar el sistema en las computadoras nuevas. | 2023-12-05 → 2023-11-20 (-15d) | 2023-12-05 → 2023-11-20 (-15d) |  |  |  | resources none → Tecnico informatico |
| 42 | Capacitar al personal de recepción. | 2023-12-05 → 2023-11-20 (-15d) | 2023-12-07 → 2023-11-22 (-15d) |  |  |  | resources none → Capacitador |
| 43 | Sistema desplegado. | 2023-12-07 → 2023-11-22 (-15d) | 2023-12-07 → 2023-11-22 (-15d) |  |  |  |  |
| 44 | Desarrollo finalizado. | 2023-12-07 → 2023-11-22 (-15d) | 2023-12-07 → 2023-11-22 (-15d) |  |  |  |  |
| 45 | Sistema de gestión implementado. | 2023-12-07 → 2023-11-22 (-15d) | 2023-12-07 → 2023-11-22 (-15d) |  |  |  |  |

## Version 4 (saved 2023-11-02, file Proyecto Planificacion Grupo 6.mpp)

Last finish stays 2023-11-22.

Added:

| ID | Task | Duration | Start | Finish | Predecessors |
| --- | --- | --- | --- | --- | --- |
| 3 | **Verificación de instalaciones** | 2.5d | 2023-09-14 | 2023-09-18 |  |
| 6 | Verificación de instalaciones finalizada. | 0d | 2023-09-18 | 2023-09-18 | 5 |
| 7 | **Entrevistas** | 0.5d | 2023-09-14 | 2023-09-14 |  |
| 10 | Entrevistas finalizadas. | 0d | 2023-09-14 | 2023-09-14 | 9 |
| 41 | **Reacondicionamiento** | 6.5d | 2023-11-09 | 2023-11-17 |  |
| 45 | Reacondicionamiento finalizado | 0d | 2023-11-17 | 2023-11-17 | 44 |
| 46 | **Instalación** | 3d | 2023-11-17 | 2023-11-22 |  |
| 50 | Instalación finalizada. | 0d | 2023-11-22 | 2023-11-22 | 49 |

Changed:

| ID | Task | Start | Finish | Duration | Total float | Predecessors | Other |
| --- | --- | --- | --- | --- | --- | --- | --- |
| 2 | **Investigación preliminar** |  |  | 19d → 18.5d | 1.75d → 1.5d |  |  |
| 9 | Realizar entrevista a las recepcionistas |  |  |  | 1.75d → 1.5d | none → 8 |  |
| 11 | Elaborar Especificación de Requisitos de Usuario (ERS) | 2023-09-15 → 2023-09-14 (-1d) |  |  | 1d → 1.5d | 8, 9 → 10 | constraint start no earlier than 2023-09-15 → none |
| 12 | Verificar el estado de los equipos actuales (computadoras). | 2023-09-20 → 2023-09-19 (-1d) | 2023-09-20 → 2023-09-19 (-1d) |  | 26.75d → 27.25d |  |  |
| 14 | Recibir pedido de computadoras. | 2023-09-21 → 2023-09-20 (-1d) |  |  | 26.75d → 27.25d |  |  |
| 16 | **Desarrollo** | 2023-09-20 → 2023-09-19 (-1d) |  | 44.75d → 45.25d |  |  |  |
| 17 | **Base de datos** | 2023-09-20 → 2023-09-19 (-1d) |  | 13.25d → 13.75d | 1d → 1.5d |  |  |
| 18 | Recopilar informacion de las planillas de Excel | 2023-09-20 → 2023-09-19 (-1d) |  |  | 41d → 41.5d |  |  |
| 25 | **Interfaz de usuario** | 2023-09-20 → 2023-09-19 (-1d) | 2023-10-04 → 2023-10-03 (-1d) |  | 3d → 3.5d |  |  |
| 26 | Diseñar boceto de interfaz del programa que será usado por el personal de recepción. | 2023-09-20 → 2023-09-19 (-1d) |  |  | 3d → 3.5d |  |  |
| 27 | Presentar boceto al personal de recepción. | 2023-09-25 → 2023-09-22 (-3d) | 2023-09-25 → 2023-09-22 (-3d) |  | 3d → 3.5d |  |  |
| 28 | Desarrollar interfaz. | 2023-09-25 → 2023-09-22 (-3d) | 2023-10-04 → 2023-10-03 (-1d) |  | 3d → 3.5d |  |  |
| 29 | Interfaz de usuario realizada. | 2023-10-04 → 2023-10-03 (-1d) | 2023-10-04 → 2023-10-03 (-1d) |  | 3d → 3.5d |  |  |
| 47 | Instalar las nuevas computadoras en el área de recepción. |  |  |  |  | 15, 44 → 15, 45 |  |
| 51 | Sistema desplegado. |  |  |  |  | 49 → 50 |  |

## Version 5 (saved 2023-11-15, file Proyecto Planificacion Grupo 6.mpp)

Last finish 2023-11-22 → 2023-11-17 (-5d).

Changed:

| ID | Task | Start | Finish | Duration | Total float | Other |
| --- | --- | --- | --- | --- | --- | --- |
| 1 | **Sistema de gestion de turnos y pacientes para la SAP** |  | 2023-11-22 → 2023-11-17 (-5d) | 48.75d → 45.25d |  |  |
| 2 | **Investigación preliminar** |  |  | 18.5d → 18.25d | 1.5d → 0d | resources Electricista → none |
| 3 | **Verificación de instalaciones** |  |  |  | 36.75d → 33.25d | resources none → Electricista |
| 13 | Realizar pedido de computadoras nuevas a la Subsecretaría de Salud. |  |  | 0.5d → 0.25d | 27.25d → 24d | resources none → Tecnico informatico |
| 16 | **Desarrollo** |  | 2023-11-22 → 2023-11-17 (-5d) | 45.25d → 41.75d |  |  |
| 17 | **Base de datos** |  | 2023-10-09 → 2023-10-03 (-6d) | 13.75d → 10d | 1.5d → 0.5d |  |
| 19 | Realizar el modelo entidad relación de la base de datos para turnos y pacientes. | 2023-09-21 → 2023-09-19 (-2d) | 2023-09-22 → 2023-09-21 (-1d) |  | 0d → 0.5d | constraint start no earlier than 2023-09-21 → none |
| 20 | Realizar modelo relacional de la BD. | 2023-09-25 → 2023-09-21 (-4d) | 2023-09-25 → 2023-09-22 (-3d) |  | 0d → 0.5d |  |
| 21 | Desarrollar la base de datos. | 2023-09-26 → 2023-09-22 (-4d) | 2023-10-02 → 2023-09-29 (-3d) |  | 0d → 0.5d |  |
| 22 | Importar datos a la BD | 2023-10-06 → 2023-10-02 (-4d) | 2023-10-06 → 2023-10-03 (-3d) |  |  |  |
| 23 | Desplegar la base de datos. | 2023-10-06 → 2023-10-03 (-3d) | 2023-10-09 → 2023-10-03 (-6d) |  | 0d → 0.25d |  |
| 24 | Base de datos desplegada. | 2023-10-09 → 2023-10-03 (-6d) | 2023-10-09 → 2023-10-03 (-6d) |  | 31.5d → 31.75d |  |
| 28 | Desarrollar interfaz. |  |  |  | 3.5d → 0d | resources Programador Junior → Programador Senior |
| 30 | **Aplicación** | 2023-10-09 → 2023-10-03 (-6d) | 2023-10-31 → 2023-10-25 (-6d) |  |  |  |
| 31 | Realizar diagrama de clases. | 2023-10-09 → 2023-10-03 (-6d) | 2023-10-10 → 2023-10-04 (-6d) |  |  |  |
| 32 | Desarrollar el módulo de turnos de la aplicación. | 2023-10-10 → 2023-10-04 (-6d) | 2023-10-31 → 2023-10-25 (-6d) |  |  |  |
| 33 | Desarrollar el módulo de pacientes de la aplicación. | 2023-10-10 → 2023-10-04 (-6d) | 2023-10-31 → 2023-10-25 (-6d) |  |  |  |
| 34 | Aplicación desarrollada. | 2023-10-31 → 2023-10-25 (-6d) | 2023-10-31 → 2023-10-25 (-6d) |  |  |  |
| 35 | **Integración** | 2023-10-31 → 2023-10-25 (-6d) | 2023-11-09 → 2023-11-03 (-6d) |  |  |  |
| 36 | Integrar capas del sistema. | 2023-10-31 → 2023-10-25 (-6d) | 2023-11-02 → 2023-10-27 (-6d) |  |  |  |
| 37 | Realizar pruebas al sistema. | 2023-11-02 → 2023-10-27 (-6d) | 2023-11-09 → 2023-11-03 (-6d) |  |  |  |
| 38 | Realizar manual de usuario de la aplicación. | 2023-11-02 → 2023-10-27 (-6d) | 2023-11-07 → 2023-11-01 (-6d) |  |  |  |
| 39 | Integración finalizada. | 2023-11-09 → 2023-11-03 (-6d) | 2023-11-09 → 2023-11-03 (-6d) |  |  |  |
| 40 | **Despliegue** | 2023-11-09 → 2023-11-03 (-6d) | 2023-11-22 → 2023-11-17 (-5d) |  |  | resources Electricista → none |
| 41 | **Reacondicionamiento** | 2023-11-09 → 2023-11-03 (-6d) | 2023-11-17 → 2023-11-14 (-3d) |  |  | resources none → Electricista |
| 42 | Realizar presupuesto de recursos para el reacondicionamiento eléctrico del sitio (cableado y limpieza). | 2023-11-09 → 2023-11-03 (-6d) | 2023-11-09 → 2023-11-06 (-3d) |  |  |  |
| 43 | Reacondicionar el lugar. | 2023-11-09 → 2023-11-06 (-3d) | 2023-11-16 → 2023-11-13 (-3d) |  |  |  |
| 44 | Realizar limpieza del lugar | 2023-11-16 → 2023-11-13 (-3d) | 2023-11-17 → 2023-11-14 (-3d) |  |  |  |
| 45 | Reacondicionamiento finalizado | 2023-11-17 → 2023-11-14 (-3d) | 2023-11-17 → 2023-11-14 (-3d) |  |  |  |
| 46 | **Instalación** | 2023-11-17 → 2023-11-14 (-3d) | 2023-11-22 → 2023-11-17 (-5d) |  |  |  |
| 47 | Instalar las nuevas computadoras en el área de recepción. | 2023-11-17 → 2023-11-14 (-3d) | 2023-11-20 → 2023-11-14 (-6d) |  |  |  |
| 48 | Instalar el sistema en las computadoras nuevas. | 2023-11-20 → 2023-11-15 (-5d) | 2023-11-20 → 2023-11-15 (-5d) |  |  |  |
| 49 | Capacitar al personal de recepción. | 2023-11-20 → 2023-11-15 (-5d) | 2023-11-22 → 2023-11-17 (-5d) |  |  |  |
| 50 | Instalación finalizada. | 2023-11-22 → 2023-11-17 (-5d) | 2023-11-22 → 2023-11-17 (-5d) |  |  |  |
| 51 | Sistema desplegado. | 2023-11-22 → 2023-11-17 (-5d) | 2023-11-22 → 2023-11-17 (-5d) |  |  |  |
| 52 | Desarrollo finalizado. | 2023-11-22 → 2023-11-17 (-5d) | 2023-11-22 → 2023-11-17 (-5d) |  |  |  |
| 53 | Sistema de gestión implementado. | 2023-11-22 → 2023-11-17 (-5d) | 2023-11-22 → 2023-11-17 (-5d) |  |  |  |

## Version 6 (saved 2023-11-16, file Proyecto Planificacion Grupo 6.mpp)

Last finish 2023-11-17 → 2023-11-06 (-11d).

Added:

| ID | Task | Duration | Start | Finish | Predecessors | Resources |
| --- | --- | --- | --- | --- | --- | --- |
| 42 | **Reacondicionamiento electrico** | 3.5d | 2023-10-26 | 2023-10-31 |  | Electricista |
| 45 | Reacondicionamiento electrico finalizado | 0d | 2023-10-31 | 2023-10-31 | 44 |  |

Changed:

| ID | Task | Start | Finish | Duration | Total float | Predecessors | Other |
| --- | --- | --- | --- | --- | --- | --- | --- |
| 1 | **Sistema de gestion de turnos y pacientes para la SAP** |  | 2023-11-17 → 2023-11-06 (-11d) | 45.25d → 37d |  |  |  |
| 3 | **Verificación de instalaciones** |  | 2023-09-18 → 2023-09-15 (-3d) | 2.5d → 1.5d | 33.25d → 28d |  |  |
| 5 | Investigar recursos para el reacondicionamiento electrico del sitio. |  | 2023-09-18 → 2023-09-15 (-3d) | 2d → 1d | 36.75d → 28d |  |  |
| 6 | Verificación de instalaciones finalizada. | 2023-09-18 → 2023-09-15 (-3d) | 2023-09-18 → 2023-09-15 (-3d) |  | 42.75d → 28d |  |  |
| 16 | **Desarrollo** |  | 2023-11-17 → 2023-11-06 (-11d) | 41.75d → 33.5d |  |  |  |
| 17 | **Base de datos** |  | 2023-10-03 → 2023-10-02 (-1d) | 10d → 9d | 0.5d → 0d |  |  |
| 21 | Desarrollar la base de datos. |  | 2023-09-29 → 2023-09-28 (-1d) | 5d → 4d | 0.5d → 0d |  |  |
| 22 | Importar datos a la BD |  | 2023-10-03 → 2023-10-02 (-1d) |  | 32d → 24.5d |  |  |
| 23 | Desplegar la base de datos. | 2023-10-03 → 2023-10-02 (-1d) | 2023-10-03 → 2023-10-02 (-1d) |  | 0.25d → 0d |  |  |
| 24 | Base de datos desplegada. | 2023-10-03 → 2023-10-02 (-1d) | 2023-10-03 → 2023-10-02 (-1d) |  | 31.75d → 24.5d |  |  |
| 25 | **Interfaz de usuario** |  | 2023-10-03 → 2023-09-29 (-4d) | 10.25d → 8.25d | 0d → 0.75d |  |  |
| 28 | Desarrollar interfaz. |  | 2023-10-03 → 2023-09-29 (-4d) | 7d → 5d | 0d → 0.75d |  |  |
| 29 | Interfaz de usuario realizada. | 2023-10-03 → 2023-09-29 (-4d) | 2023-10-03 → 2023-09-29 (-4d) |  | 0d → 0.75d |  |  |
| 30 | **Aplicación** | 2023-10-03 → 2023-10-02 (-1d) | 2023-10-25 → 2023-10-18 (-7d) | 15d → 11d |  |  |  |
| 31 | Realizar diagrama de clases. | 2023-10-03 → 2023-10-02 (-1d) | 2023-10-04 → 2023-10-03 (-1d) |  |  |  |  |
| 32 | Desarrollar el módulo de turnos de la aplicación. | 2023-10-04 → 2023-10-03 (-1d) | 2023-10-25 → 2023-10-18 (-7d) | 14d → 10d |  |  |  |
| 33 | Desarrollar el módulo de pacientes de la aplicación. | 2023-10-04 → 2023-10-03 (-1d) | 2023-10-25 → 2023-10-18 (-7d) | 14d → 10d |  |  |  |
| 34 | Aplicación desarrollada. | 2023-10-25 → 2023-10-18 (-7d) | 2023-10-25 → 2023-10-18 (-7d) |  |  |  |  |
| 35 | **Integración** | 2023-10-25 → 2023-10-18 (-7d) | 2023-11-03 → 2023-10-26 (-8d) | 7d → 6d |  |  |  |
| 36 | Integrar capas del sistema. | 2023-10-25 → 2023-10-18 (-7d) | 2023-10-27 → 2023-10-20 (-7d) |  |  |  |  |
| 37 | Realizar pruebas al sistema. | 2023-10-27 → 2023-10-20 (-7d) | 2023-11-03 → 2023-10-26 (-8d) | 5d → 4d |  |  |  |
| 38 | Realizar manual de usuario de la aplicación. | 2023-10-27 → 2023-10-20 (-7d) | 2023-11-01 → 2023-10-25 (-7d) |  | 2d → 1d |  |  |
| 39 | Integración finalizada. | 2023-11-03 → 2023-10-26 (-8d) | 2023-11-03 → 2023-10-26 (-8d) |  |  |  |  |
| 40 | **Despliegue** | 2023-11-03 → 2023-10-26 (-8d) | 2023-11-17 → 2023-11-06 (-11d) | 9.5d → 7.5d |  |  |  |
| 41 | **Reacondicionamiento** | 2023-11-03 → 2023-10-26 (-8d) | 2023-11-14 → 2023-11-01 (-13d) | 6.5d → 4.5d |  |  | resources Electricista → none |
| 43 | Realizar presupuesto de recursos para el reacondicionamiento eléctrico del sitio (cableado y limpieza). | 2023-11-03 → 2023-10-26 (-8d) | 2023-11-06 → 2023-10-26 (-11d) |  |  | 39, 5 → 39, 6 |  |
| 44 | Reacondicionar el lugar. | 2023-11-06 → 2023-10-27 (-10d) | 2023-11-13 → 2023-10-31 (-13d) | 5d → 3d |  |  |  |
| 46 | Realizar limpieza del lugar | 2023-11-13 → 2023-11-01 (-12d) | 2023-11-14 → 2023-11-01 (-13d) |  |  | 44 → 45 |  |
| 47 | Reacondicionamiento finalizado | 2023-11-14 → 2023-11-01 (-13d) | 2023-11-14 → 2023-11-01 (-13d) |  |  |  |  |
| 48 | **Instalación** | 2023-11-14 → 2023-11-02 (-12d) | 2023-11-17 → 2023-11-06 (-11d) |  |  |  |  |
| 49 | Instalar las nuevas computadoras en el área de recepción. | 2023-11-14 → 2023-11-02 (-12d) | 2023-11-14 → 2023-11-02 (-12d) |  |  |  |  |
| 50 | Instalar el sistema en las computadoras nuevas. | 2023-11-15 → 2023-11-02 (-13d) | 2023-11-15 → 2023-11-02 (-13d) |  |  |  |  |
| 51 | Capacitar al personal de recepción. | 2023-11-15 → 2023-11-03 (-12d) | 2023-11-17 → 2023-11-06 (-11d) |  |  |  |  |
| 52 | Instalación finalizada. | 2023-11-17 → 2023-11-06 (-11d) | 2023-11-17 → 2023-11-06 (-11d) |  |  |  |  |
| 53 | Sistema desplegado. | 2023-11-17 → 2023-11-06 (-11d) | 2023-11-17 → 2023-11-06 (-11d) |  |  |  |  |
| 54 | Desarrollo finalizado. | 2023-11-17 → 2023-11-06 (-11d) | 2023-11-17 → 2023-11-06 (-11d) |  |  |  |  |
| 55 | Sistema de gestión implementado. | 2023-11-17 → 2023-11-06 (-11d) | 2023-11-17 → 2023-11-06 (-11d) |  |  |  |  |

## Version 7 (saved 2023-11-16, file Proyecto Planificacion Grupo 6.mpp)

Last finish 2023-11-06 → 2023-10-30 (-7d).

Changed:

| ID | Task | Start | Finish | Duration | Total float |
| --- | --- | --- | --- | --- | --- |
| 1 | **Sistema de gestion de turnos y pacientes para la SAP** |  | 2023-11-06 → 2023-10-30 (-7d) | 37d → 32d |  |
| 16 | **Desarrollo** |  | 2023-11-06 → 2023-10-30 (-7d) | 33.5d → 28.5d |  |
| 25 | **Interfaz de usuario** |  | 2023-09-29 → 2023-09-28 (-1d) | 8.25d → 7.25d | 0.75d → 1.75d |
| 26 | Diseñar boceto de interfaz del programa que será usado por el personal de recepción. |  | 2023-09-22 → 2023-09-21 (-1d) | 3d → 2d | 0.75d → 1.75d |
| 27 | Presentar boceto al personal de recepción. | 2023-09-22 → 2023-09-21 (-1d) | 2023-09-22 → 2023-09-21 (-1d) |  | 0.75d → 1.75d |
| 28 | Desarrollar interfaz. | 2023-09-22 → 2023-09-21 (-1d) | 2023-09-29 → 2023-09-28 (-1d) |  | 0.75d → 1.75d |
| 29 | Interfaz de usuario realizada. | 2023-09-29 → 2023-09-28 (-1d) | 2023-09-29 → 2023-09-28 (-1d) |  | 0.75d → 1.75d |
| 30 | **Aplicación** |  | 2023-10-18 → 2023-10-12 (-6d) | 11d → 8d |  |
| 32 | Desarrollar el módulo de turnos de la aplicación. |  | 2023-10-18 → 2023-10-12 (-6d) | 10d → 7d |  |
| 33 | Desarrollar el módulo de pacientes de la aplicación. |  | 2023-10-18 → 2023-10-12 (-6d) | 10d → 7d |  |
| 34 | Aplicación desarrollada. | 2023-10-18 → 2023-10-12 (-6d) | 2023-10-18 → 2023-10-12 (-6d) |  |  |
| 35 | **Integración** | 2023-10-18 → 2023-10-12 (-6d) | 2023-10-26 → 2023-10-19 (-7d) | 6d → 4d |  |
| 36 | Integrar capas del sistema. | 2023-10-18 → 2023-10-12 (-6d) | 2023-10-20 → 2023-10-17 (-3d) |  |  |
| 37 | Realizar pruebas al sistema. | 2023-10-20 → 2023-10-17 (-3d) | 2023-10-26 → 2023-10-19 (-7d) | 4d → 2d |  |
| 38 | Realizar manual de usuario de la aplicación. | 2023-10-20 → 2023-10-17 (-3d) | 2023-10-25 → 2023-10-19 (-6d) | 3d → 2d | 1d → 0d |
| 39 | Integración finalizada. | 2023-10-26 → 2023-10-19 (-7d) | 2023-10-26 → 2023-10-19 (-7d) |  |  |
| 40 | **Despliegue** | 2023-10-26 → 2023-10-19 (-7d) | 2023-11-06 → 2023-10-30 (-7d) |  |  |
| 41 | **Reacondicionamiento** | 2023-10-26 → 2023-10-19 (-7d) | 2023-11-01 → 2023-10-25 (-7d) |  |  |
| 42 | **Reacondicionamiento electrico** | 2023-10-26 → 2023-10-19 (-7d) | 2023-10-31 → 2023-10-24 (-7d) |  |  |
| 43 | Realizar presupuesto de recursos para el reacondicionamiento eléctrico del sitio (cableado y limpieza). | 2023-10-26 → 2023-10-19 (-7d) | 2023-10-26 → 2023-10-19 (-7d) |  |  |
| 44 | Reacondicionar el lugar. | 2023-10-27 → 2023-10-20 (-7d) | 2023-10-31 → 2023-10-24 (-7d) |  |  |
| 45 | Reacondicionamiento electrico finalizado | 2023-10-31 → 2023-10-24 (-7d) | 2023-10-31 → 2023-10-24 (-7d) |  |  |
| 46 | Realizar limpieza del lugar | 2023-11-01 → 2023-10-25 (-7d) | 2023-11-01 → 2023-10-25 (-7d) |  |  |
| 47 | Reacondicionamiento finalizado | 2023-11-01 → 2023-10-25 (-7d) | 2023-11-01 → 2023-10-25 (-7d) |  |  |
| 48 | **Instalación** | 2023-11-02 → 2023-10-26 (-7d) | 2023-11-06 → 2023-10-30 (-7d) |  |  |
| 49 | Instalar las nuevas computadoras en el área de recepción. | 2023-11-02 → 2023-10-26 (-7d) | 2023-11-02 → 2023-10-26 (-7d) |  |  |
| 50 | Instalar el sistema en las computadoras nuevas. | 2023-11-02 → 2023-10-26 (-7d) | 2023-11-02 → 2023-10-26 (-7d) |  |  |
| 51 | Capacitar al personal de recepción. | 2023-11-03 → 2023-10-27 (-7d) | 2023-11-06 → 2023-10-30 (-7d) |  |  |
| 52 | Instalación finalizada. | 2023-11-06 → 2023-10-30 (-7d) | 2023-11-06 → 2023-10-30 (-7d) |  |  |
| 53 | Sistema desplegado. | 2023-11-06 → 2023-10-30 (-7d) | 2023-11-06 → 2023-10-30 (-7d) |  |  |
| 54 | Desarrollo finalizado. | 2023-11-06 → 2023-10-30 (-7d) | 2023-11-06 → 2023-10-30 (-7d) |  |  |
| 55 | Sistema de gestión implementado. | 2023-11-06 → 2023-10-30 (-7d) | 2023-11-06 → 2023-10-30 (-7d) |  |  |

## Version 8 (saved 2023-11-20, file Proyecto Planificacion Grupo 6.mpp)

Last finish 2023-10-30 → 2023-10-31 (+1d).

Changed:

| ID | Task | Start | Finish | Duration | Predecessors |
| --- | --- | --- | --- | --- | --- |
| 1 | **Sistema de gestion de turnos y pacientes para la SAP** |  | 2023-10-30 → 2023-10-31 (+1d) | 32d → 32.5d |  |
| 16 | **Desarrollo** |  | 2023-10-30 → 2023-10-31 (+1d) | 28.5d → 29d |  |
| 17 | **Base de datos** |  |  | 9d → 9.5d |  |
| 23 | Desplegar la base de datos. |  |  |  | 21 → 22 |
| 30 | **Aplicación** | 2023-10-02 → 2023-10-03 (+1d) |  |  |  |
| 31 | Realizar diagrama de clases. | 2023-10-02 → 2023-10-03 (+1d) |  |  | 23, 29 → 29, 24 |
| 32 | Desarrollar el módulo de turnos de la aplicación. | 2023-10-03 → 2023-10-04 (+1d) |  |  |  |
| 33 | Desarrollar el módulo de pacientes de la aplicación. | 2023-10-03 → 2023-10-04 (+1d) |  |  |  |
| 35 | **Integración** | 2023-10-12 → 2023-10-13 (+1d) |  |  |  |
| 36 | Integrar capas del sistema. | 2023-10-12 → 2023-10-13 (+1d) |  |  |  |
| 37 | Realizar pruebas al sistema. | 2023-10-17 → 2023-10-18 (+1d) |  |  |  |
| 38 | Realizar manual de usuario de la aplicación. | 2023-10-17 → 2023-10-18 (+1d) |  |  |  |
| 40 | **Despliegue** | 2023-10-19 → 2023-10-20 (+1d) | 2023-10-30 → 2023-10-31 (+1d) |  |  |
| 41 | **Reacondicionamiento** | 2023-10-19 → 2023-10-20 (+1d) | 2023-10-25 → 2023-10-26 (+1d) |  |  |
| 42 | **Reacondicionamiento electrico** | 2023-10-19 → 2023-10-20 (+1d) | 2023-10-24 → 2023-10-25 (+1d) |  |  |
| 43 | Realizar presupuesto de recursos para el reacondicionamiento eléctrico del sitio (cableado y limpieza). | 2023-10-19 → 2023-10-20 (+1d) | 2023-10-19 → 2023-10-20 (+1d) |  |  |
| 44 | Reacondicionar el lugar. |  | 2023-10-24 → 2023-10-25 (+1d) |  |  |
| 45 | Reacondicionamiento electrico finalizado | 2023-10-24 → 2023-10-25 (+1d) | 2023-10-24 → 2023-10-25 (+1d) |  |  |
| 46 | Realizar limpieza del lugar |  | 2023-10-25 → 2023-10-26 (+1d) |  |  |
| 47 | Reacondicionamiento finalizado | 2023-10-25 → 2023-10-26 (+1d) | 2023-10-25 → 2023-10-26 (+1d) |  |  |
| 48 | **Instalación** |  | 2023-10-30 → 2023-10-31 (+1d) |  |  |
| 49 | Instalar las nuevas computadoras en el área de recepción. |  | 2023-10-26 → 2023-10-27 (+1d) |  |  |
| 50 | Instalar el sistema en las computadoras nuevas. | 2023-10-26 → 2023-10-27 (+1d) | 2023-10-26 → 2023-10-27 (+1d) |  |  |
| 51 | Capacitar al personal de recepción. |  | 2023-10-30 → 2023-10-31 (+1d) |  |  |
| 52 | Instalación finalizada. | 2023-10-30 → 2023-10-31 (+1d) | 2023-10-30 → 2023-10-31 (+1d) |  |  |
| 53 | Sistema desplegado. | 2023-10-30 → 2023-10-31 (+1d) | 2023-10-30 → 2023-10-31 (+1d) |  |  |
| 54 | Desarrollo finalizado. | 2023-10-30 → 2023-10-31 (+1d) | 2023-10-30 → 2023-10-31 (+1d) |  |  |
| 55 | Sistema de gestión implementado. | 2023-10-30 → 2023-10-31 (+1d) | 2023-10-30 → 2023-10-31 (+1d) |  |  |

## Version 9 (saved 2023-11-25, file Proyecto Planificacion Grupo 6 - Seguimiento.mpp)

Last finish stays 2023-10-31. Complete tasks 0 → 20.

Changed:

| ID | Task | Start | Finish | Duration | Complete | Total float | Other |
| --- | --- | --- | --- | --- | --- | --- | --- |
| 1 | **Sistema de gestion de turnos y pacientes para la SAP** | 2023-09-14 A |  | 32.5d → 32.75d | 0% → 62% |  | baseline start none → 2023-09-14; baseline finish none → 2023-10-31 |
| 2 | **Investigación preliminar** | 2023-09-14 A | 2023-10-10 → 2023-10-11 (+1d) | 18.25d → 19.25d | 0% → 66% | 0d → 10.5d | baseline start none → 2023-09-14; baseline finish none → 2023-10-10 |
| 3 | **Verificación de instalaciones** | 2023-09-14 A | 2023-09-15 A |  | 0% → 100% | 23.5d → none | baseline start none → 2023-09-14; baseline finish none → 2023-09-15 |
| 4 | Verificar el estado de las instalaciones electricas. | 2023-09-14 A | 2023-09-14 A |  | 0% → 100% | 36.75d → none | baseline start none → 2023-09-14; baseline finish none → 2023-09-14 |
| 5 | Investigar recursos para el reacondicionamiento electrico del sitio. | 2023-09-14 A | 2023-09-15 A |  | 0% → 100% | 28d → none | baseline start none → 2023-09-14; baseline finish none → 2023-09-15 |
| 6 | Verificación de instalaciones finalizada. | 2023-09-15 A | 2023-09-15 A |  | 0% → 100% | 28d → none | baseline start none → 2023-09-15; baseline finish none → 2023-09-15 |
| 7 | **Entrevistas** | 2023-09-14 A | 2023-09-14 → 2023-09-15 A (+1d) | 0.5d → 1.5d | 0% → 100% | 0d → none | baseline start none → 2023-09-14; baseline finish none → 2023-09-14 |
| 8 | Realizar entrevista al jefe | 2023-09-14 A | 2023-09-14 A |  | 0% → 100% | 0d → none | baseline start none → 2023-09-14; baseline finish none → 2023-09-14 |
| 9 | Realizar entrevista a las recepcionistas | 2023-09-14 A | 2023-09-14 → 2023-09-15 A (+1d) | 0.25d → 1.25d | 0% → 100% | 0d → none | baseline start none → 2023-09-14; baseline finish none → 2023-09-14 |
| 10 | Entrevistas finalizadas. | 2023-09-14 → 2023-09-15 A (+1d) | 2023-09-14 → 2023-09-15 A (+1d) |  | 0% → 100% | 0d → none | baseline start none → 2023-09-14; baseline finish none → 2023-09-14 |
| 11 | Elaborar Especificación de Requisitos de Usuario (ERS) | 2023-09-14 → 2023-09-15 A (+1d) | 2023-09-19 → 2023-09-20 A (+1d) |  | 0% → 100% | 0d → none | baseline start none → 2023-09-14; baseline finish none → 2023-09-19 |
| 12 | Verificar el estado de los equipos actuales (computadoras). | 2023-09-19 → 2023-09-20 A (+1d) | 2023-09-19 → 2023-09-20 A (+1d) |  | 0% → 100% | 10.75d → none | baseline start none → 2023-09-19; baseline finish none → 2023-09-19 |
| 13 | Realizar pedido de computadoras nuevas a la Subsecretaría de Salud. | 2023-09-20 → 2023-09-21 A (+1d) | 2023-09-20 → 2023-09-21 A (+1d) |  | 0% → 100% | 10.75d → none | baseline start none → 2023-09-20; baseline finish none → 2023-09-20 |
| 14 | Recibir pedido de computadoras. | 2023-09-20 → 2023-09-21 A (+1d) | 2023-10-10 → 2023-10-11 (+1d) |  | 0% → 50% | 24d → 10.5d | baseline start none → 2023-09-20; baseline finish none → 2023-10-10 |
| 15 | Investigación preliminar realizada. | 2023-10-10 → 2023-10-11 (+1d) | 2023-10-10 → 2023-10-11 (+1d) |  |  | 24d → 10d | baseline start none → 2023-10-10; baseline finish none → 2023-10-10 |
| 16 | **Desarrollo** | 2023-09-19 → 2023-09-20 A (+1d) |  | 29d → 28.25d | 0% → 61% |  | baseline start none → 2023-09-19; baseline finish none → 2023-10-31 |
| 17 | **Base de datos** | 2023-09-19 → 2023-09-20 A (+1d) | 2023-10-02 A | 9.5d → 8d | 0% → 100% | 0d → none | baseline start none → 2023-09-19; baseline finish none → 2023-10-02 |
| 18 | Recopilar informacion de las planillas de Excel | 2023-09-19 → 2023-09-20 A (+1d) | 2023-09-20 → 2023-09-21 A (+1d) |  | 0% → 100% | 26d → none | baseline start none → 2023-09-19; baseline finish none → 2023-09-20 |
| 19 | Realizar el modelo entidad relación de la base de datos para turnos y pacientes. | 2023-09-19 → 2023-09-20 A (+1d) | 2023-09-21 → 2023-09-22 A (+1d) |  | 0% → 100% | 0d → none | baseline start none → 2023-09-19; baseline finish none → 2023-09-21 |
| 20 | Realizar modelo relacional de la BD. | 2023-09-21 → 2023-09-22 A (+1d) | 2023-09-22 → 2023-09-25 A (+3d) |  | 0% → 100% | 0d → none | baseline start none → 2023-09-21; baseline finish none → 2023-09-22 |
| 21 | Desarrollar la base de datos. | 2023-09-22 → 2023-09-25 A (+3d) | 2023-09-28 → 2023-09-29 A (+1d) |  | 0% → 100% | 0d → none | baseline start none → 2023-09-22; baseline finish none → 2023-09-28 |
| 22 | Importar datos a la BD | 2023-10-02 → 2023-09-29 A (-3d) | 2023-10-02 → 2023-09-29 A (-3d) |  | 0% → 100% | 0d → none | resources Programador Junior → Administrador de BD; baseline start none → 2023-10-02; baseline finish none → 2023-10-02 |
| 23 | Desplegar la base de datos. | 2023-10-02 A | 2023-10-02 A |  | 0% → 100% | 0d → none | resources Programador Junior → Administrador de BD; baseline start none → 2023-10-02; baseline finish none → 2023-10-02 |
| 24 | Base de datos desplegada. | 2023-10-02 A | 2023-10-02 A |  | 0% → 100% | 0d → none | baseline start none → 2023-10-02; baseline finish none → 2023-10-02 |
| 25 | **Interfaz de usuario** | 2023-09-19 → 2023-09-20 A (+1d) | 2023-09-28 → 2023-10-02 A (+4d) | 7.25d → 8.25d | 0% → 100% | 2.25d → none | baseline start none → 2023-09-19; baseline finish none → 2023-09-28 |
| 26 | Diseñar boceto de interfaz del programa que será usado por el personal de recepción. | 2023-09-19 → 2023-09-20 A (+1d) | 2023-09-21 → 2023-09-22 A (+1d) |  | 0% → 100% | 1.75d → none | baseline start none → 2023-09-19; baseline finish none → 2023-09-21 |
| 27 | Presentar boceto al personal de recepción. | 2023-09-21 → 2023-09-22 A (+1d) | 2023-09-21 → 2023-09-25 A (+4d) | 0.25d → 1.25d | 0% → 100% | 1.75d → none | baseline start none → 2023-09-21; baseline finish none → 2023-09-21 |
| 28 | Desarrollar interfaz. | 2023-09-21 → 2023-09-25 A (+4d) | 2023-09-28 → 2023-10-02 A (+4d) |  | 0% → 100% | 1.75d → none | baseline start none → 2023-09-21; baseline finish none → 2023-09-28 |
| 29 | Interfaz de usuario realizada. | 2023-09-28 → 2023-10-02 A (+4d) | 2023-09-28 → 2023-10-02 A (+4d) |  | 0% → 100% | 1.75d → none | baseline start none → 2023-09-28; baseline finish none → 2023-09-28 |
| 30 | **Aplicación** | 2023-10-03 → 2023-10-02 A (-1d) |  |  | 0% → 50% | 0d → 1d | baseline start none → 2023-10-03; baseline finish none → 2023-10-12 |
| 31 | Realizar diagrama de clases. | 2023-10-03 → 2023-10-02 A (-1d) |  |  | 0% → 50% | 0d → 3.5d | baseline start none → 2023-10-03; baseline finish none → 2023-10-03 |
| 32 | Desarrollar el módulo de turnos de la aplicación. | 2023-10-04 → 2023-10-03 A (-1d) |  |  | 0% → 50% | 0d → 1d | baseline start none → 2023-10-04; baseline finish none → 2023-10-12 |
| 33 | Desarrollar el módulo de pacientes de la aplicación. | 2023-10-04 → 2023-10-03 A (-1d) |  |  | 0% → 50% | 0d → 1d | baseline start none → 2023-10-04; baseline finish none → 2023-10-12 |
| 34 | Aplicación desarrollada. | 2023-10-12 A |  |  | 0% → 50% | 0d → 1d | baseline start none → 2023-10-12; baseline finish none → 2023-10-12 |
| 35 | **Integración** | 2023-10-13 → 2023-10-12 A (-1d) | 2023-10-19 → 2023-10-20 (+1d) | 4d → 4.5d | 0% → 50% |  | baseline start none → 2023-10-13; baseline finish none → 2023-10-19 |
| 36 | Integrar capas del sistema. | 2023-10-13 → 2023-10-12 A (-1d) |  |  | 0% → 50% | 0d → 1d | baseline start none → 2023-10-13; baseline finish none → 2023-10-17 |
| 37 | Realizar pruebas al sistema. | 2023-10-18 → 2023-10-17 A (-1d) | 2023-10-19 → 2023-10-20 (+1d) | 2d → 2.5d | 0% → 50% |  | baseline start none → 2023-10-18; baseline finish none → 2023-10-19 |
| 38 | Realizar manual de usuario de la aplicación. | 2023-10-18 → 2023-10-17 A (-1d) |  |  | 0% → 50% | 0d → 0.5d | baseline start none → 2023-10-18; baseline finish none → 2023-10-19 |
| 39 | Integración finalizada. | 2023-10-19 → 2023-10-20 A (+1d) | 2023-10-19 → 2023-10-20 (+1d) |  | 0% → 50% |  | baseline start none → 2023-10-19; baseline finish none → 2023-10-19 |
| 40 | **Despliegue** |  |  |  |  |  | baseline start none → 2023-10-20; baseline finish none → 2023-10-31 |
| 41 | **Reacondicionamiento** |  |  |  |  |  | baseline start none → 2023-10-20; baseline finish none → 2023-10-26 |
| 42 | **Reacondicionamiento electrico** |  |  |  |  |  | baseline start none → 2023-10-20; baseline finish none → 2023-10-25 |
| 43 | Realizar presupuesto de recursos para el reacondicionamiento eléctrico del sitio (cableado y limpieza). |  |  |  |  |  | baseline start none → 2023-10-20; baseline finish none → 2023-10-20 |
| 44 | Reacondicionar el lugar. |  |  |  |  |  | baseline start none → 2023-10-20; baseline finish none → 2023-10-25 |
| 45 | Reacondicionamiento electrico finalizado |  |  |  |  |  | baseline start none → 2023-10-25; baseline finish none → 2023-10-25 |
| 46 | Realizar limpieza del lugar |  |  |  |  |  | baseline start none → 2023-10-25; baseline finish none → 2023-10-26 |
| 47 | Reacondicionamiento finalizado |  |  |  |  |  | baseline start none → 2023-10-26; baseline finish none → 2023-10-26 |
| 48 | **Instalación** |  |  |  |  |  | baseline start none → 2023-10-26; baseline finish none → 2023-10-31 |
| 49 | Instalar las nuevas computadoras en el área de recepción. |  |  |  |  |  | baseline start none → 2023-10-26; baseline finish none → 2023-10-27 |
| 50 | Instalar el sistema en las computadoras nuevas. |  |  |  |  |  | resources Tecnico informatico → Tecnico Informatico 2; baseline start none → 2023-10-27; baseline finish none → 2023-10-27 |
| 51 | Capacitar al personal de recepción. |  |  |  |  |  | baseline start none → 2023-10-27; baseline finish none → 2023-10-31 |
| 52 | Instalación finalizada. |  |  |  |  |  | baseline start none → 2023-10-31; baseline finish none → 2023-10-31 |
| 53 | Sistema desplegado. |  |  |  |  |  | baseline start none → 2023-10-31; baseline finish none → 2023-10-31 |
| 54 | Desarrollo finalizado. |  |  |  |  |  | baseline start none → 2023-10-31; baseline finish none → 2023-10-31 |
| 55 | Sistema de gestión implementado. |  |  |  |  |  | baseline start none → 2023-10-31; baseline finish none → 2023-10-31 |

## Version 10 (saved 2023-11-28, file Proyecto Planificacion Grupo 6 - Seguimiento.mpp)

Note of the change: :chart_with_upwards_trend:

Last finish 2023-10-31 → 2023-11-01 (+1d). Complete tasks 20 → 22.

Changed:

| ID | Task | Start | Finish | Duration | Complete | Total float | Other |
| --- | --- | --- | --- | --- | --- | --- | --- |
| 1 | **Sistema de gestion de turnos y pacientes para la SAP** |  | 2023-10-31 → 2023-11-01 (+1d) | 32.75d → 33.5d | 62% → 72% |  |  |
| 2 | **Investigación preliminar** |  | 2023-10-11 → 2023-10-10 A (-1d) | 19.25d → 19d | 66% → 100% | 10.5d → none |  |
| 7 | **Entrevistas** |  |  | 1.5d → 1.25d |  |  |  |
| 9 | Realizar entrevista a las recepcionistas | 2023-09-14 A → 2023-09-15 A (+1d) |  | 1.25d → 0.25d |  |  |  |
| 13 | Realizar pedido de computadoras nuevas a la Subsecretaría de Salud. | 2023-09-21 A → 2023-09-20 A (-1d) | 2023-09-21 A → 2023-09-20 A (-1d) |  |  |  |  |
| 14 | Recibir pedido de computadoras. |  | 2023-10-11 → 2023-10-10 A (-1d) |  | 50% → 100% | 10.5d → none |  |
| 15 | Investigación preliminar realizada. | 2023-10-11 → 2023-10-10 A (-1d) | 2023-10-11 → 2023-10-10 A (-1d) |  | 0% → 100% | 10d → none |  |
| 16 | **Desarrollo** |  | 2023-10-31 → 2023-11-01 (+1d) | 28.25d → 29.25d |  |  |  |
| 17 | **Base de datos** |  | 2023-10-02 A → 2023-10-03 A (+1d) | 8d → 9.25d |  |  |  |
| 22 | Importar datos a la BD | 2023-09-29 A → 2023-10-02 A (+3d) | 2023-09-29 A → 2023-10-02 A (+3d) |  |  |  |  |
| 23 | Desplegar la base de datos. | 2023-10-02 A → 2023-10-03 A (+1d) | 2023-10-02 A → 2023-10-03 A (+1d) |  |  |  |  |
| 24 | Base de datos desplegada. | 2023-10-02 A → 2023-10-03 A (+1d) | 2023-10-02 A → 2023-10-03 A (+1d) |  |  |  |  |
| 30 | **Aplicación** | 2023-10-02 A → 2023-10-03 A (+1d) | 2023-10-12 → 2023-10-13 (+1d) |  |  |  |  |
| 31 | Realizar diagrama de clases. | 2023-10-02 A → 2023-10-03 A (+1d) | 2023-10-03 → 2023-10-04 (+1d) |  |  |  |  |
| 32 | Desarrollar el módulo de turnos de la aplicación. | 2023-10-03 A → 2023-10-04 A (+1d) | 2023-10-12 → 2023-10-13 (+1d) |  |  |  |  |
| 33 | Desarrollar el módulo de pacientes de la aplicación. | 2023-10-03 A → 2023-10-04 A (+1d) | 2023-10-12 → 2023-10-13 (+1d) |  |  |  |  |
| 34 | Aplicación desarrollada. | 2023-10-12 A → 2023-10-13 A (+1d) | 2023-10-12 → 2023-10-13 (+1d) |  |  |  |  |
| 35 | **Integración** | 2023-10-12 A → 2023-10-13 A (+1d) |  |  |  |  |  |
| 36 | Integrar capas del sistema. | 2023-10-12 A → 2023-10-13 A (+1d) | 2023-10-17 → 2023-10-18 (+1d) |  |  |  |  |
| 37 | Realizar pruebas al sistema. | 2023-10-17 A → 2023-10-18 A (+1d) |  |  |  |  |  |
| 38 | Realizar manual de usuario de la aplicación. | 2023-10-17 A → 2023-10-18 A (+1d) | 2023-10-19 → 2023-10-20 (+1d) |  |  |  |  |
| 40 | **Despliegue** | 2023-10-20 → 2023-10-23 (+3d) | 2023-10-31 → 2023-11-01 (+1d) |  |  |  |  |
| 41 | **Reacondicionamiento** | 2023-10-20 → 2023-10-23 (+3d) | 2023-10-26 → 2023-10-27 (+1d) |  |  |  |  |
| 42 | **Reacondicionamiento electrico** | 2023-10-20 → 2023-10-23 (+3d) | 2023-10-25 → 2023-10-26 (+1d) |  |  |  |  |
| 43 | Realizar presupuesto de recursos para el reacondicionamiento eléctrico del sitio (cableado y limpieza). | 2023-10-20 → 2023-10-23 (+3d) | 2023-10-20 → 2023-10-23 (+3d) |  |  |  |  |
| 44 | Reacondicionar el lugar. | 2023-10-20 → 2023-10-23 (+3d) | 2023-10-25 → 2023-10-26 (+1d) |  |  |  |  |
| 45 | Reacondicionamiento electrico finalizado | 2023-10-25 → 2023-10-26 (+1d) | 2023-10-25 → 2023-10-26 (+1d) |  |  |  |  |
| 46 | Realizar limpieza del lugar | 2023-10-25 → 2023-10-26 (+1d) | 2023-10-26 → 2023-10-27 (+1d) |  |  |  |  |
| 47 | Reacondicionamiento finalizado | 2023-10-26 → 2023-10-27 (+1d) | 2023-10-26 → 2023-10-27 (+1d) |  |  |  |  |
| 48 | **Instalación** | 2023-10-26 → 2023-10-27 (+1d) | 2023-10-31 → 2023-11-01 (+1d) |  |  |  |  |
| 49 | Instalar las nuevas computadoras en el área de recepción. | 2023-10-26 → 2023-10-27 (+1d) | 2023-10-27 → 2023-10-30 (+3d) |  |  |  |  |
| 50 | Instalar el sistema en las computadoras nuevas. | 2023-10-27 → 2023-10-30 (+3d) | 2023-10-27 → 2023-10-30 (+3d) |  |  |  | resources Tecnico Informatico 2 → Tecnico informatico 2 |
| 51 | Capacitar al personal de recepción. | 2023-10-27 → 2023-10-30 (+3d) | 2023-10-31 → 2023-11-01 (+1d) |  |  |  |  |
| 52 | Instalación finalizada. | 2023-10-31 → 2023-11-01 (+1d) | 2023-10-31 → 2023-11-01 (+1d) |  |  |  |  |
| 53 | Sistema desplegado. | 2023-10-31 → 2023-11-01 (+1d) | 2023-10-31 → 2023-11-01 (+1d) |  |  |  |  |
| 54 | Desarrollo finalizado. | 2023-10-31 → 2023-11-01 (+1d) | 2023-10-31 → 2023-11-01 (+1d) |  |  |  |  |
| 55 | Sistema de gestión implementado. | 2023-10-31 → 2023-11-01 (+1d) | 2023-10-31 → 2023-11-01 (+1d) |  |  |  |  |
